# IrisSoftwareGestao

Schedule from MS Project, 2022-11-14 to 2023-03-27, 4 hours a day, costs in R$, A marks actual dates.

## Calendars

- Standard: Mon-Wed 08:00-12:00, 13:00-17:00; Thu-Sun off.

## Resources

| Resource | Rate |
| --- | --- |
| Udy | 90 |
| Charles | 90 |
| Alexandre | 90 |
| Renato | 90 |

## Schedule

| ID | WBS | Task | Duration | Start | Finish | Predecessors | Complete | Remaining | Total slack | Free slack | Constraint | Resources | Work | Actual work | Cost | Actual cost |
| --- | --- | --- | --- | --- | --- | --- | --- | --- | --- | --- | --- | --- | --- | --- | --- | --- |
| 1 | 1 | **Iris - Gestão Imobiliária** | 115d | 2022-11-14 A | 2023-03-27 |  | 13% | 100.57d | 0d |  |  |  | 779h | 106.4h | 70,110 | 9,576 |
| 2 | 1.1 | **Documentação e Setup** | 17d | 2022-11-14 A | 2022-11-30 |  | 59% | 7.04d | 0.27d | 0d |  |  | 152h | 94.4h | 13,680 | 8,496 |
| 3 | 1.1.1 | Modelagem de Banco de Dados | 8d | 2022-11-14 A | 2022-11-21 |  | 80% | 1.6d | 1.2d | 0d | start no earlier than 2022-11-14 | Renato | 32h | 25.6h | 2,880 | 2,304 |
| 4 | 1.1.2 | Criação de Base de Dados | 3d | 2022-11-22 A | 2022-11-23 | 3 | 80% | 0.6d | 3.27d | 0d |  | Renato | 12h | 9.6h | 1,080 | 864 |
| 5 | 1.1.3 | Arquitetura da Informação + Protótipo de Baixa | 7d | 2022-11-14 A | 2022-11-21 |  | 50% | 3.5d | 1.77d | 0d | start no earlier than 2022-11-14 | Alexandre | 20h | 10h | 1,800 | 900 |
| 6 | 1.1.4 | Guia de Estilo | 7d | 2022-11-21 | 2022-11-28 | 5 |  |  | 1.77d | 0d |  | Alexandre | 20h |  | 1,800 |  |
| 7 | 1.1.5 | Definições de Arquitetura | 8d | 2022-11-14 A | 2022-11-21 |  | 90% | 0.8d | 4.77d | 0d | start no earlier than 2022-11-14 | Charles | 32h | 28.8h | 2,880 | 2,592 |
| 8 | 1.1.6 | Versionamento | 3d | 2022-11-22 A | 2022-11-23 A | 7 | 100% |  |  |  |  | Charles | 12h | 12h | 1,080 | 1,080 |
| 9 | 1.1.7 | Configuração de Workspace | 3d | 2022-11-23 A | 2022-11-28 | 8 | 50% | 1.5d | 0.3d | 0d |  | Charles | 12h | 6h | 1,080 | 540 |
| 10 | 1.1.8 | Configuração de Segurança | 3d | 2022-11-29 A | 2022-11-30 | 9 | 20% | 2.4d | 0.27d | 0d |  | Charles | 12h | 2.4h | 1,080 | 216 |
| 11 | 1.2 | **Desenvolvimento** | 93d | 2022-11-30 A | 2023-03-20 | 2 | 2% | 91.37d | 0d |  |  |  | 615h | 12h | 55,350 | 1,080 |
| 12 | 1.2.1 | **Autenticação e Perfil de Acesso** | 13d | 2022-11-30 A | 2022-12-14 |  | 15% | 11d | 0d |  |  |  | 49h | 8h | 4,410 | 720 |
| 13 | 1.2.1.1 | Desenvolvimento | 10d | 2022-11-30 A | 2022-12-13 |  | 20% | 8d | 0d |  |  | Charles | 40h | 8h | 3,600 | 720 |
| 14 | 1.2.1.2 | Publicação | 1d | 2022-12-13 | 2022-12-13 | 13 |  |  | 0d |  |  | Charles | 1h |  | 90 |  |
| 15 | 1.2.1.3 | Testes | 2d | 2022-12-14 | 2022-12-14 | 14 |  |  | 0d |  |  | Udy | 8h |  | 720 |  |
| 16 | 1.2.2 | **Imóvel** | 15d | 2022-11-30 | 2022-12-19 |  |  |  | 0d |  |  |  | 47h |  | 4,230 |  |
| 17 | 1.2.2.1 | Prototipação | 2d | 2022-11-30 | 2022-12-05 |  |  |  | 2d | 0d |  | Alexandre | 6h |  | 540 |  |
| 18 | 1.2.2.2 | Desenvolvimento | 8d | 2022-12-05 | 2022-12-13 | 17 |  |  | 2d | 0d |  | Renato | 32h |  | 2,880 |  |
| 19 | 1.2.2.3 | Publicação | 1d | 2022-12-13 | 2022-12-13 | 18 |  |  | 2d | 0d |  | Renato | 1h |  | 90 |  |
| 20 | 1.2.2.4 | Testes | 2d | 2022-12-19 | 2022-12-19 | 15 |  |  | 0d |  |  | Udy | 8h |  | 720 |  |
| 21 | 1.2.3 | **Cliente** | 6d | 2022-12-19 A | 2022-12-21 | 12 | 17% | 5d | 0d |  |  |  | 18h | 4h | 1,620 | 360 |
| 22 | 1.2.3.1 | Prototipação | 2d | 2022-12-19 | 2022-12-19 | 17 |  |  | 0d |  |  | Alexandre | 6h |  | 540 |  |
| 23 | 1.2.3.2 | Desenvolvimento | 2d | 2022-12-20 A | 2022-12-20 | 22 | 50% | 1d | 0d |  |  | Charles | 8h | 4h | 720 | 360 |
| 24 | 1.2.3.3 | Publicação | 1d | 2022-12-21 | 2022-12-21 | 23 |  |  | 0d |  |  | Charles | 1h |  | 90 |  |
| 25 | 1.2.3.4 | Testes | 1d | 2022-12-21 | 2022-12-21 | 24 |  |  | 0d |  |  | Udy | 3h |  | 270 |  |

| ID | WBS | Task | Duration | Start | Finish | Predecessors | Total slack | Free slack | Resources | Work | Cost |
| --- | --- | --- | --- | --- | --- | --- | --- | --- | --- | --- | --- |
| 26 | 1.2.4 | **Contrato** | 9d | 2022-12-20 | 2022-12-28 | 16 | 0d |  |  | 28h | 2,520 |
| 27 | 1.2.4.1 | Prototipação | 2d | 2022-12-20 | 2022-12-20 | 22 | 0d |  | Alexandre | 6h | 540 |
| 28 | 1.2.4.2 | Desenvolvimento | 4d | 2022-12-21 | 2022-12-26 | 27 | 0d |  | Renato | 16h | 1,440 |
| 29 | 1.2.4.3 | Publicação | 1d | 2022-12-27 | 2022-12-27 | 28 | 0d |  | Renato | 1h | 90 |
| 30 | 1.2.4.4 | Testes | 2d | 2022-12-27 | 2022-12-28 | 29 | 0d |  | Udy | 5h | 450 |
| 31 | 1.2.5 | **Contrato de Aluguel** | 9d | 2022-12-26 | 2023-01-03 | 21 | 0d |  |  | 31h | 2,790 |
| 32 | 1.2.5.1 | Prototipação | 2d | 2022-12-26 | 2022-12-26 | 27 | 0d |  | Alexandre | 6h | 540 |
| 33 | 1.2.5.2 | Desenvolvimento | 4d | 2022-12-27 | 2022-12-28 | 32 | 0d |  | Charles | 16h | 1,440 |
| 34 | 1.2.5.3 | Publicação | 1d | 2023-01-02 | 2023-01-02 | 33 | 0d |  | Charles | 1h | 90 |
| 35 | 1.2.5.4 | Testes | 2d | 2023-01-02 | 2023-01-03 | 34 | 0d |  | Udy | 8h | 720 |
| 36 | 1.2.6 | **Fornecedor** | 6d | 2022-12-28 | 2023-01-04 | 26 | 0d |  |  | 18h | 1,620 |
| 37 | 1.2.6.1 | Prototipação | 2d | 2022-12-28 | 2023-01-02 | 32 | 0d |  | Alexandre | 6h | 540 |
| 38 | 1.2.6.2 | Desenvolvimento | 2d | 2023-01-02 | 2023-01-03 | 37 | 0d |  | Renato | 8h | 720 |
| 39 | 1.2.6.3 | Publicação | 1d | 2023-01-03 | 2023-01-03 | 38 | 0d |  | Renato | 1h | 90 |
| 40 | 1.2.6.4 | Testes | 1d | 2023-01-04 | 2023-01-04 | 39 | 0d |  | Udy | 3h | 270 |
| 41 | 1.2.7 | **Contrato de Fornecedor** | 9d | 2023-01-03 | 2023-01-11 | 31 | 0d |  |  | 28.5h | 2,565 |
| 42 | 1.2.7.1 | Prototipação | 2d | 2023-01-03 | 2023-01-04 | 37 | 0d |  | Alexandre | 6.5h | 585 |
| 43 | 1.2.7.2 | Desenvolvimento | 4d | 2023-01-04 | 2023-01-10 | 42 | 7d | 0d | Charles | 16h | 1,440 |
| 44 | 1.2.7.3 | Publicação | 1d | 2023-01-10 | 2023-01-10 | 43 | 7d | 0d | Charles | 1h | 90 |
| 45 | 1.2.7.4 | Testes | 2d | 2023-01-11 | 2023-01-11 | 44 | 7d | 0d | Udy | 5h | 450 |
| 46 | 1.2.8 | **Contas a Pagar** | 23d | 2023-01-04 | 2023-01-31 | 36 | 0d |  |  | 87.5h | 7,875 |
| 47 | 1.2.8.1 | Prototipação | 2d | 2023-01-04 | 2023-01-09 | 42 | 0d |  | Alexandre | 6.5h | 585 |
| 48 | 1.2.8.2 | Desenvolvimento | 16d | 2023-01-09 | 2023-01-25 | 47 | 0d |  | Renato | 64h | 5,760 |
| 49 | 1.2.8.3 | Publicação | 1d | 2023-01-25 | 2023-01-25 | 48 | 0d |  | Renato | 1h | 90 |
| 50 | 1.2.8.4 | Testes | 4d | 2023-01-30 | 2023-01-31 | 49 | 0d |  | Udy | 16h | 1,440 |

| ID | WBS | Task | Duration | Start | Finish | Predecessors | Total slack | Free slack | Resources | Work | Cost |
| --- | --- | --- | --- | --- | --- | --- | --- | --- | --- | --- | --- |
| 51 | 1.2.9 | **Contas a Receber** | 11d | 2023-01-16 | 2023-01-25 | 41 | 7d | 0d |  | 38.5h | 3,465 |
| 52 | 1.2.9.1 | Prototipação | 2d | 2023-01-16 | 2023-01-16 | 47 | 7d | 0d | Alexandre | 6.5h | 585 |
| 53 | 1.2.9.2 | Desenvolvimento | 6d | 2023-01-17 | 2023-01-23 | 52 | 9.5d | 0d | Charles | 24h | 2,160 |
| 54 | 1.2.9.3 | Publicação | 1d | 2023-01-24 | 2023-01-24 | 53 | 9.5d | 0d | Charles | 1h | 90 |
| 55 | 1.2.9.4 | Testes | 2d | 2023-01-24 | 2023-01-25 | 54 | 9.5d | 0d | Udy | 7h | 630 |
| 56 | 1.2.10 | **Obra** | 9d | 2023-02-01 | 2023-02-13 | 46 | 0d |  |  | 31.5h | 2,835 |
| 57 | 1.2.10.1 | Prototipação | 2d | 2023-02-01 | 2023-02-01 | 52 | 0d |  | Alexandre | 6.5h | 585 |
| 58 | 1.2.10.2 | Desenvolvimento | 4d | 2023-02-06 | 2023-02-07 | 57 | 0d |  | Renato | 16h | 1,440 |
| 59 | 1.2.10.3 | Publicação | 1d | 2023-02-08 | 2023-02-08 | 58 | 0d |  | Renato | 1h | 90 |
| 60 | 1.2.10.4 | Testes | 2d | 2023-02-08 | 2023-02-13 | 59 | 0d |  | Udy | 8h | 720 |
| 61 | 1.2.11 | **Anexo** | 18d | 2023-01-25 | 2023-02-15 | 51 | 8d | 0d |  | 73h | 6,570 |
| 62 | 1.2.11.1 | Desenvolvimento | 14d | 2023-01-25 | 2023-02-13 | 54 | 9.5d | 0d | Charles | 56h | 5,040 |
| 63 | 1.2.11.2 | Publicação | 1d | 2023-02-13 | 2023-02-13 | 62 | 9.5d | 0d | Charles | 1h | 90 |
| 64 | 1.2.11.3 | Testes | 4d | 2023-02-13 | 2023-02-15 | 60 | 8d | 0d | Udy | 16h | 1,440 |
| 65 | 1.2.12 | **Relatório** | 28d | 2023-02-13 | 2023-03-15 | 56 | 0d |  |  | 106h | 9,540 |
| 66 | 1.2.12.1 | Prototipação | 2d | 2023-02-13 | 2023-02-14 | 57 | 0d |  | Alexandre | 7h | 630 |
| 67 | 1.2.12.2 | Desenvolvimento | 20d | 2023-02-14 | 2023-03-08 | 66 | 0d |  | Renato | 80h | 7,200 |
| 68 | 1.2.12.3 | Publicação | 1d | 2023-03-08 | 2023-03-08 | 67 | 0d |  | Renato | 1h | 90 |
| 69 | 1.2.12.4 | Testes | 5d | 2023-03-13 | 2023-03-15 | 68 | 0d |  | Udy | 18h | 1,620 |
| 70 | 1.2.13 | **Indicador** | 27d | 2023-02-15 | 2023-03-20 | 61 | 0d |  |  | 59h | 5,310 |
| 71 | 1.2.13.1 | Prototipação | 2d | 2023-02-15 | 2023-02-20 | 66 | 12.5d | 0d | Alexandre | 7h | 630 |
| 72 | 1.2.13.2 | Desenvolvimento | 10d | 2023-02-15 | 2023-02-28 | 62 | 8d | 0d | Charles | 40h | 3,600 |
| 73 | 1.2.13.3 | Publicação | 1d | 2023-02-28 | 2023-02-28 | 72 | 8d | 0d | Charles | 1h | 90 |
| 74 | 1.2.13.4 | Testes | 3d | 2023-03-15 | 2023-03-20 | 69 | 0d |  | Udy | 11h | 990 |

| ID | WBS | Task | Duration | Start | Finish | Predecessors | Total slack | Free slack | Resources | Work | Cost |
| --- | --- | --- | --- | --- | --- | --- | --- | --- | --- | --- | --- |
| 75 | 1.3 | **Implantação** | 5d | 2023-03-21 | 2023-03-27 | 11 | 0d |  |  | 12h | 1,080 |
| 76 | 1.3.1 | Ativação em produção | 2d | 2023-03-21 | 2023-03-21 |  | 1.5d | 0d | Charles | 4h | 360 |
| 77 | 1.3.2 | Treinamento | 5d | 2023-03-21 | 2023-03-27 |  | 0d |  | Renato | 8h | 720 |
